# DATASTOCK_COSTOS

Schedule from MS Project, 2026-02-25 to 2026-06-22, costs in $, A marks actual dates.

## Calendars

- DATASTOCK: Mon-Fri 08:00-12:00, 13:00-17:00; Sat-Sun off. Exceptions (off unless hours are given): 2026-03-23 (festivo marzo 23).

## Resources

| Resource | Rate |
| --- | --- |
| ANALISTA_1 | 24800 |
| DESARROLLADOR FRONT_END | 29900 |
| ANALISTA_2 | 24800 |
| DESARROLLADOR BACK_END | 29900 |
| QA | 18700 |
| POSTMAN | 74000 |
| VISUAL PARADING | 74000 |
| FIGMA | 222000 |
| COMPUTADOR_1 | 2800000 |
| COMPUTADOR_2 | 1700000 |

## Schedule

| ID | WBS | Task | Duration | Start | Finish | Predecessors | Complete | Remaining | Total slack | Free slack | Resources | Work | Actual work | Cost | Actual cost |
| --- | --- | --- | --- | --- | --- | --- | --- | --- | --- | --- | --- | --- | --- | --- | --- |
| 1 | 1 | **FASE 1** | 7d | 2026-02-25 09:00 | 2026-03-06 09:00 |  |  |  | 0.88d |  |  | 112h |  | 7,277,600 |  |
| 2 | 1.1 | Planificación | 2d | 2026-02-25 09:00 | 2026-02-27 09:00 |  |  |  | 0.88d | 0d | ANALISTA_1; ANALISTA_2; COMPUTADOR_1; COMPUTADOR_2 | 32h |  | 5,293,600 |  |
| 3 | 1.2 | Componente Metodológico | 2d | 2026-02-27 09:00 | 2026-03-03 09:00 | 2 |  |  | 0.88d | 0d | ANALISTA_1; ANALISTA_2 | 32h |  | 793,600 |  |
| 4 | 1.3 | Crear Cronograma | 3d | 2026-03-03 09:00 | 2026-03-06 09:00 | 3 |  |  | 0.88d | 0d | ANALISTA_1; ANALISTA_2 | 48h |  | 1,190,400 |  |
| 5 | 2 | **FASE 2** | 17d | 2026-03-06 09:00 A | 2026-04-01 09:00 |  | 5% | 16.12d | 0.03d |  |  | 272h | 14.08h | 6,745,600 | 349,184 |
| 6 | 2.1 | **ANÁLISIS** | 17d | 2026-03-06 09:00 A | 2026-04-01 09:00 |  | 5% | 16.12d | 0.03d |  |  | 272h | 14.08h | 6,745,600 | 349,184 |
| 7 | 2.1.1 | Entrevistas | 5d | 2026-03-06 09:00 | 2026-03-13 09:00 | 4 |  |  | 0.88d | 0d | ANALISTA_1; ANALISTA_2 | 80h |  | 1,984,000 |  |
| 8 | 2.1.2 | Recolección y levantamiento de requisitos | 2d | 2026-03-13 09:00 A | 2026-03-17 09:00 | 7 | 44% | 1.12d | 0.03d | 0d | ANALISTA_1; ANALISTA_2 | 32h | 14.08h | 793,600 | 349,184 |
| 9 | 2.1.3 | Análisis y especificación de requerimientos | 2d | 2026-03-17 09:00 | 2026-03-19 09:00 | 8 |  |  | 0.03d | 0d | ANALISTA_1; ANALISTA_2 | 32h |  | 793,600 |  |
| 10 | 2.1.4 | Priorización de Requisitos | 2d | 2026-03-19 09:00 | 2026-03-24 09:00 | 9 |  |  | 0.03d | 0d | ANALISTA_1; ANALISTA_2 | 32h |  | 793,600 |  |
| 11 | 2.1.5 | Análisis de BPMN | 4d | 2026-03-24 09:00 | 2026-03-30 09:00 | 10 |  |  | 0.03d | 0d | ANALISTA_1; ANALISTA_2 | 64h |  | 1,587,200 |  |
| 12 | 2.1.6 | Validación de los Requerimientos | 2d | 2026-03-30 09:00 | 2026-04-01 09:00 | 11 |  |  | 0.03d | 0d | ANALISTA_1; ANALISTA_2 | 32h |  | 793,600 |  |
| 13 | 3 | **FASE 3** | 17d | 2026-04-01 09:00 | 2026-04-24 09:00 |  |  |  | 0.03d |  |  | 272h |  | 6,745,600 |  |
| 14 | 3.1 | **DISEÑO** | 17d | 2026-04-01 09:00 | 2026-04-24 09:00 |  |  |  | 0.03d |  |  | 272h |  | 6,745,600 |  |
| 15 | 3.1.1 | **UML** | 5d | 2026-04-01 09:00 | 2026-04-08 09:00 |  |  |  | 0.03d |  |  | 80h |  | 1,984,000 |  |
| 16 | 3.1.1.1 | Diseño de la Arquitectura con Casos de uso | 3d | 2026-04-01 09:00 | 2026-04-06 09:00 | 12 |  |  | 0.03d | 0d | ANALISTA_1; ANALISTA_2 | 48h |  | 1,190,400 |  |
| 17 | 3.1.1.2 | Diagrama de Clases | 2d | 2026-04-06 09:00 | 2026-04-08 09:00 | 16 |  |  | 0.03d | 0d | ANALISTA_1; ANALISTA_2 | 32h |  | 793,600 |  |
| 18 | 3.1.2 | Diseño de Base de Datos | 3d | 2026-04-08 09:00 | 2026-04-13 09:00 | 17 |  |  | 0.03d | 0d | ANALISTA_1; ANALISTA_2 | 48h |  | 1,190,400 |  |
| 19 | 3.1.3 | Prototipo Interfaz de Usuario | 1d | 2026-04-13 09:00 | 2026-04-14 09:00 | 18 |  |  | 0.03d | 0d | ANALISTA_1; ANALISTA_2 | 16h |  | 396,800 |  |
| 20 | 3.1.4 | Definición de Componentes | 1d | 2026-04-14 09:00 | 2026-04-15 09:00 | 19 |  |  | 0.03d | 0d | ANALISTA_1; ANALISTA_2 | 16h |  | 396,800 |  |
| 21 | 3.1.5 | Aplicación de Patrones de Diseño | 2d | 2026-04-15 09:00 | 2026-04-17 09:00 | 20 |  |  | 0.03d | 0d | ANALISTA_1; ANALISTA_2 | 32h |  | 793,600 |  |
| 22 | 3.1.6 | Documentación y Estandarización | 4d | 2026-04-17 09:00 | 2026-04-23 09:00 | 21 |  |  | 0.03d | 0d | ANALISTA_1; ANALISTA_2 | 64h |  | 1,587,200 |  |
| 23 | 3.1.7 | Evaluación y Mitigación de Riesgos | 1d | 2026-04-23 09:00 | 2026-04-24 09:00 | 22 |  |  | 0.03d | 0d | ANALISTA_1; ANALISTA_2 | 16h |  | 396,800 |  |
| 24 | 4 | **FASE 4** | 23d | 2026-04-24 09:00 | 2026-05-27 09:00 |  |  |  | 0.03d |  |  | 400h |  | 11,796,800 |  |
| 25 | 4.1 | **DESARROLLO** | 23d | 2026-04-24 09:00 | 2026-05-27 09:00 |  |  |  | 0.03d |  |  | 400h |  | 11,796,800 |  |
| 26 | 4.1.1 | Escritura de código fuente | 15d | 2026-04-24 09:00 | 2026-05-15 09:00 | 23 |  |  | 0.03d | 0d | DESARROLLADOR BACK_END; DESARROLLADOR FRONT_END | 240h |  | 7,176,000 |  |
| 27 | 4.1.2 | Desarrollo de componentes/módulos | 3d | 2026-05-15 09:00 | 2026-05-20 09:00 | 26 |  |  | 0.03d | 0d | DESARROLLADOR BACK_END; DESARROLLADOR FRONT_END | 48h |  | 1,435,200 |  |
| 28 | 4.1.3 | Integración de código | 1d | 2026-05-20 09:00 | 2026-05-21 09:00 | 27 |  |  | 0.03d | 0d | DESARROLLADOR BACK_END; DESARROLLADOR FRONT_END | 16h |  | 478,400 |  |
| 29 | 4.1.4 | Documentación técnica | 2d | 2026-05-21 09:00 | 2026-05-25 09:00 | 28 |  |  | 0.03d | 0d | ANALISTA_1; ANALISTA_2; DESARROLLADOR BACK_END; DESARROLLADOR FRONT_END | 64h |  | 1,750,400 |  |
| 30 | 4.1.5 | Refactorización | 2d | 2026-05-25 09:00 | 2026-05-27 09:00 | 29 |  |  | 0.03d | 0d | DESARROLLADOR BACK_END; DESARROLLADOR FRONT_END | 32h |  | 956,800 |  |

| ID | WBS | Task | Type | Duration | Start | Finish | Predecessors | Total slack | Free slack | Constraint | Resources | Work | Cost |
| --- | --- | --- | --- | --- | --- | --- | --- | --- | --- | --- | --- | --- | --- |
| 31 | 5 | **FASE 5** |  | 6d | 2026-05-27 09:00 | 2026-06-04 09:00 |  | 0.03d |  |  | POSTMAN | 48h | 971,600 |
| 32 | 5.1 | **PRUEBAS** |  | 6d | 2026-05-27 09:00 | 2026-06-04 09:00 |  | 0.03d |  |  |  | 48h | 897,600 |
| 33 | 5.1.1 | Pruebas Funcionales |  | 1d | 2026-05-27 09:00 | 2026-05-28 09:00 | 30 | 0.03d | 0d |  | QA | 8h | 149,600 |
| 34 | 5.1.2 | Pruebas de Automatización |  | 2d | 2026-05-28 09:00 | 2026-06-01 09:00 | 33 | 0.03d | 0d |  | QA | 16h | 299,200 |
| 35 | 5.1.3 | Pruebas de Interfaz de Usuario (UI) y Usabilidad |  | 1d | 2026-06-01 09:00 | 2026-06-02 09:00 | 34 | 0.03d | 0d |  | QA | 8h | 149,600 |
| 36 | 5.1.4 | Pruebas de Compatibilidad y Entorno |  | 2d | 2026-06-02 09:00 | 2026-06-04 09:00 | 35 | 0.03d | 0d |  | QA | 16h | 299,200 |
| 37 | 6 | **FASE 6** |  | 12d | 2026-06-04 09:00 | 2026-06-22 09:00 |  | 0.03d |  |  |  | 240h | 6,507,200 |
| 38 | 6.1 | **DESPLIEGUE** |  | 12d | 2026-06-04 09:00 | 2026-06-22 09:00 |  | 0.03d |  |  |  | 240h | 6,507,200 |
| 39 | 6.1.1 | Planificación y Preparación |  | 1d | 2026-06-04 09:00 | 2026-06-05 09:00 | 36 | 0.03d | 0d |  | ANALISTA_1; ANALISTA_2 | 16h | 396,800 |
| 40 | 6.1.2 | Gestión de Cambios y Scripts |  | 2d | 2026-06-05 09:00 | 2026-06-09 09:00 | 39 | 0.03d | 0d |  | DESARROLLADOR BACK_END; DESARROLLADOR FRONT_END | 32h | 956,800 |
| 41 | 6.1.3 | Copias de Seguridad (Backup) |  | 1d | 2026-06-09 09:00 | 2026-06-10 09:00 | 40 | 0.03d | 0d |  | ANALISTA_1; ANALISTA_2; DESARROLLADOR BACK_END; DESARROLLADOR FRONT_END | 32h | 875,200 |
| 42 | 6.1.4 | Migración de Esquema y Datos |  | 2d | 2026-06-10 09:00 | 2026-06-12 09:00 | 41 | 0.03d | 0d |  | ANALISTA_1; ANALISTA_2; DESARROLLADOR BACK_END; DESARROLLADOR FRONT_END | 64h | 1,750,400 |
| 43 | 6.1.5 | Validación y Pruebas |  | 2d | 2026-06-12 09:00 | 2026-06-16 09:00 | 42 | 0.03d | 0d |  | DESARROLLADOR BACK_END; DESARROLLADOR FRONT_END; QA | 48h | 1,256,000 |
| 44 | 6.1.6 | Configuración de Seguridad |  | 2d | 2026-06-16 09:00 | 2026-06-18 09:00 | 43 | 0.03d | 0d |  | DESARROLLADOR BACK_END | 16h | 478,400 |
| 45 | 6.1.7 | Estrategias de Despliegue |  | 1d | 2026-06-18 09:00 | 2026-06-19 09:00 | 44 | 0.03d | 0d |  | ANALISTA_1; ANALISTA_2 | 16h | 396,800 |
| 46 | 6.1.8 | Monitoreo y Cierre |  | 1d | 2026-06-19 09:00 | 2026-06-22 09:00 | 45 | 0.03d |  |  | ANALISTA_1; ANALISTA_2 | 16h | 396,800 |
| 47 | 7 | **TAREA DIARIA** |  | 82.03d | 2026-02-25 09:00 | 2026-06-22 09:15 |  | 0d |  |  |  |  |  |
| 48 | 7.1 | **Gestión de versiones (Versión Control)** |  | 82.03d | 2026-02-25 09:00 | 2026-06-22 09:15 |  | 0d |  |  |  |  |  |
| 49 | 7.1.1 | Gestión de versiones (Versión Control) 1 | manual | 15min | 2026-02-25 09:00 | 2026-02-25 09:15 |  |  |  | start no earlier than 2026-02-25 09:00 |  |  |  |
| 50 | 7.1.2 | Gestión de versiones (Versión Control) 2 | manual | 15min | 2026-02-26 09:00 | 2026-02-26 09:15 |  |  |  | start no earlier than 2026-02-26 09:00 |  |  |  |
| 51 | 7.1.3 | Gestión de versiones (Versión Control) 3 | manual | 15min | 2026-02-27 09:00 | 2026-02-27 09:15 |  |  |  | start no earlier than 2026-02-27 09:00 |  |  |  |
| 52 | 7.1.4 | Gestión de versiones (Versión Control) 4 | manual | 15min | 2026-03-02 09:00 | 2026-03-02 09:15 |  |  |  | start no earlier than 2026-03-02 09:00 |  |  |  |
| 53 | 7.1.5 | Gestión de versiones (Versión Control) 5 | manual | 15min | 2026-03-03 09:00 | 2026-03-03 09:15 |  |  |  | start no earlier than 2026-03-03 09:00 |  |  |  |
| 54 | 7.1.6 | Gestión de versiones (Versión Control) 6 | manual | 15min | 2026-03-04 09:00 | 2026-03-04 09:15 |  |  |  | start no earlier than 2026-03-04 09:00 |  |  |  |
| 55 | 7.1.7 | Gestión de versiones (Versión Control) 7 | manual | 15min | 2026-03-05 09:00 | 2026-03-05 09:15 |  |  |  | start no earlier than 2026-03-05 09:00 |  |  |  |
| 56 | 7.1.8 | Gestión de versiones (Versión Control) 8 | manual | 15min | 2026-03-06 09:00 | 2026-03-06 09:15 |  |  |  | start no earlier than 2026-03-06 09:00 |  |  |  |
| 57 | 7.1.9 | Gestión de versiones (Versión Control) 9 | manual | 15min | 2026-03-09 09:00 | 2026-03-09 09:15 |  |  |  | start no earlier than 2026-03-09 09:00 |  |  |  |
| 58 | 7.1.10 | Gestión de versiones (Versión Control) 10 | manual | 15min | 2026-03-10 09:00 | 2026-03-10 09:15 |  |  |  | start no earlier than 2026-03-10 09:00 |  |  |  |
| 59 | 7.1.11 | Gestión de versiones (Versión Control) 11 | manual | 15min | 2026-03-11 09:00 | 2026-03-11 09:15 |  |  |  | start no earlier than 2026-03-11 09:00 |  |  |  |
| 60 | 7.1.12 | Gestión de versiones (Versión Control) 12 | manual | 15min | 2026-03-12 09:00 | 2026-03-12 09:15 |  |  |  | start no earlier than 2026-03-12 09:00 |  |  |  |
| 61 | 7.1.13 | Gestión de versiones (Versión Control) 13 | manual | 15min | 2026-03-13 09:00 | 2026-03-13 09:15 |  |  |  | start no earlier than 2026-03-13 09:00 |  |  |  |
| 62 | 7.1.14 | Gestión de versiones (Versión Control) 14 | manual | 15min | 2026-03-16 09:00 | 2026-03-16 09:15 |  |  |  | start no earlier than 2026-03-16 09:00 |  |  |  |
| 63 | 7.1.15 | Gestión de versiones (Versión Control) 15 | manual | 15min | 2026-03-17 09:00 | 2026-03-17 09:15 |  |  |  | start no earlier than 2026-03-17 09:00 |  |  |  |
| 64 | 7.1.16 | Gestión de versiones (Versión Control) 16 | manual | 15min | 2026-03-18 09:00 | 2026-03-18 09:15 |  |  |  | start no earlier than 2026-03-18 09:00 |  |  |  |
| 65 | 7.1.17 | Gestión de versiones (Versión Control) 17 | manual | 15min | 2026-03-19 09:00 | 2026-03-19 09:15 |  |  |  | start no earlier than 2026-03-19 09:00 |  |  |  |
| 66 | 7.1.18 | Gestión de versiones (Versión Control) 18 | manual | 15min | 2026-03-20 09:00 | 2026-03-20 09:15 |  |  |  | start no earlier than 2026-03-20 09:00 |  |  |  |
| 67 | 7.1.19 | Gestión de versiones (Versión Control) 19 | manual | 15min | 2026-03-24 09:00 | 2026-03-24 09:15 |  |  |  | start no earlier than 2026-03-24 09:00 |  |  |  |
| 68 | 7.1.20 | Gestión de versiones (Versión Control) 20 | manual | 15min | 2026-03-25 09:00 | 2026-03-25 09:15 |  |  |  | start no earlier than 2026-03-25 09:00 |  |  |  |
| 69 | 7.1.21 | Gestión de versiones (Versión Control) 21 | manual | 15min | 2026-03-26 09:00 | 2026-03-26 09:15 |  |  |  | start no earlier than 2026-03-26 09:00 |  |  |  |
| 70 | 7.1.22 | Gestión de versiones (Versión Control) 22 | manual | 15min | 2026-03-27 09:00 | 2026-03-27 09:15 |  |  |  | start no earlier than 2026-03-27 09:00 |  |  |  |
| 71 | 7.1.23 | Gestión de versiones (Versión Control) 23 | manual | 15min | 2026-03-30 09:00 | 2026-03-30 09:15 |  |  |  | start no earlier than 2026-03-30 09:00 |  |  |  |
| 72 | 7.1.24 | Gestión de versiones (Versión Control) 24 | manual | 15min | 2026-03-31 09:00 | 2026-03-31 09:15 |  |  |  | start no earlier than 2026-03-31 09:00 |  |  |  |
| 73 | 7.1.25 | Gestión de versiones (Versión Control) 25 | manual | 15min | 2026-04-01 09:00 | 2026-04-01 09:15 |  |  |  | start no earlier than 2026-04-01 09:00 |  |  |  |
| 74 | 7.1.26 | Gestión de versiones (Versión Control) 26 | manual | 15min | 2026-04-02 09:00 | 2026-04-02 09:15 |  |  |  | start no earlier than 2026-04-02 09:00 |  |  |  |
| 75 | 7.1.27 | Gestión de versiones (Versión Control) 27 | manual | 15min | 2026-04-03 09:00 | 2026-04-03 09:15 |  |  |  | start no earlier than 2026-04-03 09:00 |  |  |  |
| 76 | 7.1.28 | Gestión de versiones (Versión Control) 28 | manual | 15min | 2026-04-06 09:00 | 2026-04-06 09:15 |  |  |  | start no earlier than 2026-04-06 09:00 |  |  |  |
| 77 | 7.1.29 | Gestión de versiones (Versión Control) 29 | manual | 15min | 2026-04-07 09:00 | 2026-04-07 09:15 |  |  |  | start no earlier than 2026-04-07 09:00 |  |  |  |
| 78 | 7.1.30 | Gestión de versiones (Versión Control) 30 | manual | 15min | 2026-04-08 09:00 | 2026-04-08 09:15 |  |  |  | start no earlier than 2026-04-08 09:00 |  |  |  |
| 79 | 7.1.31 | Gestión de versiones (Versión Control) 31 | manual | 15min | 2026-04-09 09:00 | 2026-04-09 09:15 |  |  |  | start no earlier than 2026-04-09 09:00 |  |  |  |
| 80 | 7.1.32 | Gestión de versiones (Versión Control) 32 | manual | 15min | 2026-04-10 09:00 | 2026-04-10 09:15 |  |  |  | start no earlier than 2026-04-10 09:00 |  |  |  |
| 81 | 7.1.33 | Gestión de versiones (Versión Control) 33 | manual | 15min | 2026-04-13 09:00 | 2026-04-13 09:15 |  |  |  | start no earlier than 2026-04-13 09:00 |  |  |  |
| 82 | 7.1.34 | Gestión de versiones (Versión Control) 34 | manual | 15min | 2026-04-14 09:00 | 2026-04-14 09:15 |  |  |  | start no earlier than 2026-04-14 09:00 |  |  |  |
| 83 | 7.1.35 | Gestión de versiones (Versión Control) 35 | manual | 15min | 2026-04-15 09:00 | 2026-04-15 09:15 |  |  |  | start no earlier than 2026-04-15 09:00 |  |  |  |
| 84 | 7.1.36 | Gestión de versiones (Versión Control) 36 | manual | 15min | 2026-04-16 09:00 | 2026-04-16 09:15 |  |  |  | start no earlier than 2026-04-16 09:00 |  |  |  |
| 85 | 7.1.37 | Gestión de versiones (Versión Control) 37 | manual | 15min | 2026-04-17 09:00 | 2026-04-17 09:15 |  |  |  | start no earlier than 2026-04-17 09:00 |  |  |  |
| 86 | 7.1.38 | Gestión de versiones (Versión Control) 38 | manual | 15min | 2026-04-20 09:00 | 2026-04-20 09:15 |  |  |  | start no earlier than 2026-04-20 09:00 |  |  |  |
| 87 | 7.1.39 | Gestión de versiones (Versión Control) 39 | manual | 15min | 2026-04-21 09:00 | 2026-04-21 09:15 |  |  |  | start no earlier than 2026-04-21 09:00 |  |  |  |
| 88 | 7.1.40 | Gestión de versiones (Versión Control) 40 | manual | 15min | 2026-04-22 09:00 | 2026-04-22 09:15 |  |  |  | start no earlier than 2026-04-22 09:00 |  |  |  |
| 89 | 7.1.41 | Gestión de versiones (Versión Control) 41 | manual | 15min | 2026-04-23 09:00 | 2026-04-23 09:15 |  |  |  | start no earlier than 2026-04-23 09:00 |  |  |  |
| 90 | 7.1.42 | Gestión de versiones (Versión Control) 42 | manual | 15min | 2026-04-24 09:00 | 2026-04-24 09:15 |  |  |  | start no earlier than 2026-04-24 09:00 |  |  |  |
| 91 | 7.1.43 | Gestión de versiones (Versión Control) 43 | manual | 15min | 2026-04-27 09:00 | 2026-04-27 09:15 |  |  |  | start no earlier than 2026-04-27 09:00 |  |  |  |
| 92 | 7.1.44 | Gestión de versiones (Versión Control) 44 | manual | 15min | 2026-04-28 09:00 | 2026-04-28 09:15 |  |  |  | start no earlier than 2026-04-28 09:00 |  |  |  |
| 93 | 7.1.45 | Gestión de versiones (Versión Control) 45 | manual | 15min | 2026-04-29 09:00 | 2026-04-29 09:15 |  |  |  | start no earlier than 2026-04-29 09:00 |  |  |  |
| 94 | 7.1.46 | Gestión de versiones (Versión Control) 46 | manual | 15min | 2026-04-30 09:00 | 2026-04-30 09:15 |  |  |  | start no earlier than 2026-04-30 09:00 |  |  |  |
| 95 | 7.1.47 | Gestión de versiones (Versión Control) 47 | manual | 15min | 2026-05-01 09:00 | 2026-05-01 09:15 |  |  |  | start no earlier than 2026-05-01 09:00 |  |  |  |
| 96 | 7.1.48 | Gestión de versiones (Versión Control) 48 | manual | 15min | 2026-05-04 09:00 | 2026-05-04 09:15 |  |  |  | start no earlier than 2026-05-04 09:00 |  |  |  |
| 97 | 7.1.49 | Gestión de versiones (Versión Control) 49 | manual | 15min | 2026-05-05 09:00 | 2026-05-05 09:15 |  |  |  | start no earlier than 2026-05-05 09:00 |  |  |  |
| 98 | 7.1.50 | Gestión de versiones (Versión Control) 50 | manual | 15min | 2026-05-06 09:00 | 2026-05-06 09:15 |  |  |  | start no earlier than 2026-05-06 09:00 |  |  |  |
| 99 | 7.1.51 | Gestión de versiones (Versión Control) 51 | manual | 15min | 2026-05-07 09:00 | 2026-05-07 09:15 |  |  |  | start no earlier than 2026-05-07 09:00 |  |  |  |
| 100 | 7.1.52 | Gestión de versiones (Versión Control) 52 | manual | 15min | 2026-05-08 09:00 | 2026-05-08 09:15 |  |  |  | start no earlier than 2026-05-08 09:00 |  |  |  |

| ID | WBS | Task | Type | Duration | Start | Finish | Constraint |
| --- | --- | --- | --- | --- | --- | --- | --- |
| 101 | 7.1.53 | Gestión de versiones (Versión Control) 53 | manual | 15min | 2026-05-11 09:00 | 2026-05-11 09:15 | start no earlier than 2026-05-11 09:00 |
| 102 | 7.1.54 | Gestión de versiones (Versión Control) 54 | manual | 15min | 2026-05-12 09:00 | 2026-05-12 09:15 | start no earlier than 2026-05-12 09:00 |
| 103 | 7.1.55 | Gestión de versiones (Versión Control) 55 | manual | 15min | 2026-05-13 09:00 | 2026-05-13 09:15 | start no earlier than 2026-05-13 09:00 |
| 104 | 7.1.56 | Gestión de versiones (Versión Control) 56 | manual | 15min | 2026-05-14 09:00 | 2026-05-14 09:15 | start no earlier than 2026-05-14 09:00 |
| 105 | 7.1.57 | Gestión de versiones (Versión Control) 57 | manual | 15min | 2026-05-15 09:00 | 2026-05-15 09:15 | start no earlier than 2026-05-15 09:00 |
| 106 | 7.1.58 | Gestión de versiones (Versión Control) 58 | manual | 15min | 2026-05-18 09:00 | 2026-05-18 09:15 | start no earlier than 2026-05-18 09:00 |
| 107 | 7.1.59 | Gestión de versiones (Versión Control) 59 | manual | 15min | 2026-05-19 09:00 | 2026-05-19 09:15 | start no earlier than 2026-05-19 09:00 |
| 108 | 7.1.60 | Gestión de versiones (Versión Control) 60 | manual | 15min | 2026-05-20 09:00 | 2026-05-20 09:15 | start no earlier than 2026-05-20 09:00 |
| 109 | 7.1.61 | Gestión de versiones (Versión Control) 61 | manual | 15min | 2026-05-21 09:00 | 2026-05-21 09:15 | start no earlier than 2026-05-21 09:00 |
| 110 | 7.1.62 | Gestión de versiones (Versión Control) 62 | manual | 15min | 2026-05-22 09:00 | 2026-05-22 09:15 | start no earlier than 2026-05-22 09:00 |
| 111 | 7.1.63 | Gestión de versiones (Versión Control) 63 | manual | 15min | 2026-05-25 09:00 | 2026-05-25 09:15 | start no earlier than 2026-05-25 09:00 |
| 112 | 7.1.64 | Gestión de versiones (Versión Control) 64 | manual | 15min | 2026-05-26 09:00 | 2026-05-26 09:15 | start no earlier than 2026-05-26 09:00 |
| 113 | 7.1.65 | Gestión de versiones (Versión Control) 65 | manual | 15min | 2026-05-27 09:00 | 2026-05-27 09:15 | start no earlier than 2026-05-27 09:00 |
| 114 | 7.1.66 | Gestión de versiones (Versión Control) 66 | manual | 15min | 2026-05-28 09:00 | 2026-05-28 09:15 | start no earlier than 2026-05-28 09:00 |
| 115 | 7.1.67 | Gestión de versiones (Versión Control) 67 | manual | 15min | 2026-05-29 09:00 | 2026-05-29 09:15 | start no earlier than 2026-05-29 09:00 |
| 116 | 7.1.68 | Gestión de versiones (Versión Control) 68 | manual | 15min | 2026-06-01 09:00 | 2026-06-01 09:15 | start no earlier than 2026-06-01 09:00 |
| 117 | 7.1.69 | Gestión de versiones (Versión Control) 69 | manual | 15min | 2026-06-02 09:00 | 2026-06-02 09:15 | start no earlier than 2026-06-02 09:00 |
| 118 | 7.1.70 | Gestión de versiones (Versión Control) 70 | manual | 15min | 2026-06-03 09:00 | 2026-06-03 09:15 | start no earlier than 2026-06-03 09:00 |
| 119 | 7.1.71 | Gestión de versiones (Versión Control) 71 | manual | 15min | 2026-06-04 09:00 | 2026-06-04 09:15 | start no earlier than 2026-06-04 09:00 |
| 120 | 7.1.72 | Gestión de versiones (Versión Control) 72 | manual | 15min | 2026-06-05 09:00 | 2026-06-05 09:15 | start no earlier than 2026-06-05 09:00 |
| 121 | 7.1.73 | Gestión de versiones (Versión Control) 73 | manual | 15min | 2026-06-08 09:00 | 2026-06-08 09:15 | start no earlier than 2026-06-08 09:00 |
| 122 | 7.1.74 | Gestión de versiones (Versión Control) 74 | manual | 15min | 2026-06-09 09:00 | 2026-06-09 09:15 | start no earlier than 2026-06-09 09:00 |
| 123 | 7.1.75 | Gestión de versiones (Versión Control) 75 | manual | 15min | 2026-06-10 09:00 | 2026-06-10 09:15 | start no earlier than 2026-06-10 09:00 |
| 124 | 7.1.76 | Gestión de versiones (Versión Control) 76 | manual | 15min | 2026-06-11 09:00 | 2026-06-11 09:15 | start no earlier than 2026-06-11 09:00 |
| 125 | 7.1.77 | Gestión de versiones (Versión Control) 77 | manual | 15min | 2026-06-12 09:00 | 2026-06-12 09:15 | start no earlier than 2026-06-12 09:00 |
| 126 | 7.1.78 | Gestión de versiones (Versión Control) 78 | manual | 15min | 2026-06-15 09:00 | 2026-06-15 09:15 | start no earlier than 2026-06-15 09:00 |
| 127 | 7.1.79 | Gestión de versiones (Versión Control) 79 | manual | 15min | 2026-06-16 09:00 | 2026-06-16 09:15 | start no earlier than 2026-06-16 09:00 |
| 128 | 7.1.80 | Gestión de versiones (Versión Control) 80 | manual | 15min | 2026-06-17 09:00 | 2026-06-17 09:15 | start no earlier than 2026-06-17 09:00 |
| 129 | 7.1.81 | Gestión de versiones (Versión Control) 81 | manual | 15min | 2026-06-18 09:00 | 2026-06-18 09:15 | start no earlier than 2026-06-18 09:00 |
| 130 | 7.1.82 | Gestión de versiones (Versión Control) 82 | manual | 15min | 2026-06-19 09:00 | 2026-06-19 09:15 | start no earlier than 2026-06-19 09:00 |
| 131 | 7.1.83 | Gestión de versiones (Versión Control) 83 | manual | 15min | 2026-06-22 09:00 | 2026-06-22 09:15 | start no earlier than 2026-06-22 09:00 |

| ID | WBS | Task | Type | Duration | Start | Finish | Total slack | Constraint | Resources | Cost |
| --- | --- | --- | --- | --- | --- | --- | --- | --- | --- | --- |
| 132 | 8 | **SUSCRIPCIONES MENSUALES** |  | 44d | 2026-04-01 08:00 | 2026-06-01 17:00 | 0d |  |  | 888,000 |
| 133 | 8.1 | **FIGMA** |  | 44d | 2026-04-01 08:00 | 2026-06-01 17:00 | 0d |  |  | 666,000 |
| 134 | 8.1.1 | FIGMA 1 | manual | 1d | 2026-04-01 08:00 | 2026-04-01 17:00 |  | start no earlier than 2026-04-01 08:00 | FIGMA | 222,000 |
| 135 | 8.1.2 | FIGMA 2 | manual | 1d | 2026-05-01 08:00 | 2026-05-01 17:00 |  | start no earlier than 2026-05-01 08:00 | FIGMA | 222,000 |
| 136 | 8.1.3 | FIGMA 3 | manual | 1d | 2026-06-01 08:00 | 2026-06-01 17:00 |  | start no earlier than 2026-06-01 08:00 | FIGMA | 222,000 |
| 137 | 8.2 | **VISUAL PARADIGM** |  | 44d | 2026-04-01 08:00 | 2026-06-01 17:00 | 0d |  |  | 222,000 |
| 138 | 8.2.1 | VISUAL PARADIGM 1 | manual | 1d | 2026-04-01 08:00 | 2026-04-01 17:00 |  | start no earlier than 2026-04-01 08:00 | VISUAL PARADING | 74,000 |
| 139 | 8.2.2 | VISUAL PARADIGM 2 | manual | 1d | 2026-05-01 08:00 | 2026-05-01 17:00 |  | start no earlier than 2026-05-01 08:00 | VISUAL PARADING | 74,000 |
| 140 | 8.2.3 | VISUAL PARADIGM 3 | manual | 1d | 2026-06-01 08:00 | 2026-06-01 17:00 |  | start no earlier than 2026-06-01 08:00 | VISUAL PARADING | 74,000 |
